# Example Design Project

How a schedule from MS Project changed from version to version. A marks actual dates.

## Version 1 (saved 2013-11-10, file Project Schedule.mpp)

Note of the change: Merge branch 'master' of https://github.com/spesialstyrker/Electronic-Compass

| ID | WBS | Task | Duration | Start | Finish | Predecessors | Total float | Constraint |
| --- | --- | --- | --- | --- | --- | --- | --- | --- |
| 1 | 1 | **Project Initiation** | 9d | 2013-10-14 | 2013-10-24 |  | 3d |  |
| 2 |  | Initial Design | 8d | 2013-10-14 | 2013-10-23 |  | 3d | start no earlier than 2013-10-14 |
| 3 |  | Parts Purchase | 1d | 2013-10-24 | 2013-10-24 | 2 | 3d |  |
| 4 | 2 | **Schematic/Layout** | 17d | 2013-10-25 | 2013-11-18 |  | 0d |  |
| 5 |  | Schematic | 8d | 2013-10-25 | 2013-11-05 | 3 | 3d |  |
| 6 |  | Layout | 5d | 2013-11-06 | 2013-11-12 | 5 | 3d |  |
| 7 |  | Sent board design to OSH Park | 1d | 2013-11-18 | 2013-11-18 | 6 | 0d | start no earlier than 2013-11-18 |
| 8 | 3 | **Programming the LCD** | 26d | 2013-10-24 | 2013-11-28 |  | 14d |  |
| 9 |  | Research/Read Data Sheets | 8d | 2013-10-24 | 2013-11-04 | 2 | 14d |  |
| 10 |  | Create Image Library | 8d | 2013-10-24 | 2013-11-04 | 2 | 32d |  |
| 11 |  | Develop SPI Library | 8d | 2013-11-05 | 2013-11-14 | 9 | 14d |  |
| 12 |  | Develop Nokia 5110 Library | 10d | 2013-11-15 | 2013-11-28 | 11 | 14d |  |
| 13 | 4 | **Programming the Magnetometer** | 26d | 2013-10-24 | 2013-11-28 |  | 14d |  |
| 14 |  | Research/Read Data Sheets | 8d | 2013-10-24 | 2013-11-04 | 2 | 14d |  |
| 15 |  | Develop TWI Library | 8d | 2013-11-05 | 2013-11-14 | 14 | 14d |  |
| 16 |  | Develop LSM303 Library | 10d | 2013-11-15 | 2013-11-28 | 15 | 14d |  |
| 17 | 5 | **Prototyping** | 9d | 2013-11-19 | 2013-11-29 |  | 0d |  |
| 18 |  | Parts Order | 1d | 2013-11-19 | 2013-11-19 | 7 | 0d |  |
| 19 |  | Construct Board | 3d | 2013-11-20 | 2013-11-22 | 18, 7 | 0d |  |
| 20 |  | Test Prototype | 5d | 2013-11-25 | 2013-11-29 | 19 | 0d |  |
| 21 | 6 | **Build and Test** | 13d | 2013-12-02 | 2013-12-18 |  | 0d |  |
| 22 |  | Construct Boards | 3d | 2013-12-02 | 2013-12-04 | 20 | 0d |  |
| 23 |  | Test Boards | 5d | 2013-12-05 | 2013-12-11 | 22 | 0d |  |
| 24 |  | Documentation/Presentation | 5d | 2013-12-12 | 2013-12-18 | 23 | 0d |  |

## Version 2 (saved 2013-11-10, file Project Schedule.mpp)

Note of the change: asdfjkl;

Last finish 2013-12-18 → 2013-12-11 (-7d).

Changed:

| ID | Task | Start | Finish | Duration | Total float | Predecessors |
| --- | --- | --- | --- | --- | --- | --- |
| 10 | Create Image Library |  | 2013-11-04 → 2013-10-29 (-6d) | 8d → 4d | 32d → 13d |  |
| 11 | Develop SPI Library |  |  |  | 14d → 9d | 9 → 9, 10 |
| 21 | **Build and Test** |  | 2013-12-18 → 2013-12-11 (-7d) | 13d → 8d |  |  |
| 24 | Documentation/Presentation | 2013-12-12 → 2013-12-02 (-10d) | 2013-12-18 → 2013-12-06 (-12d) |  | 0d → 3d | 23 → 20 |

## Version 3 (saved 2013-11-10, file Project Schedule New.mpp)

Note of the change: made some updates to the layout checklist

Last finish 2013-12-11 → 2013-12-24 (+13d). Complete tasks 0 → 6.

Added:

| ID | Task | Duration | Start | Finish | Predecessors | Resources |
| --- | --- | --- | --- | --- | --- | --- |
| 5 | Create Schematic Checklist | 3d | 2013-10-24 A | 2013-10-28 A | 2 | Ben; Cody; John; Michael |

Changed:

| ID | Task | Start | Finish | Duration | Complete | Total float | Predecessors | Other |
| --- | --- | --- | --- | --- | --- | --- | --- | --- |
| 1 | **Project Initiation** | 2013-10-14 A | 2013-10-24 A |  | 0% → 100% | 3d → none |  |  |
| 2 | Initial Design | 2013-10-14 A | 2013-10-23 A |  | 0% → 100% | 3d → none |  |  |
| 3 | Prototype Parts Purchase | 2013-10-24 A | 2013-10-24 A |  | 0% → 100% | 3d → none |  | was named Parts Purchase |
| 4 | **Schematic/Layout** | 2013-10-25 → 2013-10-24 A (-1d) |  | 17d → 18d | 0% → 61% | 0d → 4d |  |  |
| 6 | Schematic | 2013-10-25 → 2013-10-29 A (+4d) | 2013-11-05 → 2013-11-07 A (+2d) |  | 0% → 100% | 3d → none | 3 → 5 |  |
| 7 | Layout | 2013-11-06 → 2013-11-08 (+2d) | 2013-11-12 → 2013-11-15 (+3d) | 5d → 6d |  | 3d → 4d |  |  |
| 8 | Sent board design to OSH Park |  |  |  |  | 0d → 4d |  | resources none → Cody |
| 9 | **Programming the LCD** | 2013-10-24 A |  |  | 0% → 35% | 9d → 0d |  |  |
| 10 | Research/Read Data Sheets | 2013-10-24 A |  |  | 0% → 75% | 9d → 2d |  |  |
| 11 | Create Image Library | 2013-10-24 A | 2013-10-29 → 2013-11-04 (+6d) | 4d → 8d | 0% → 50% | 13d → 8d |  |  |
| 12 | Develop SPI Library | 2013-11-05 A |  |  | 0% → 25% | 9d → 0d | 10, 11 → 10 |  |
| 13 | Develop Nokia 5110 Library |  |  |  |  | 9d → 0d | 12 → 12, 11 |  |
| 14 | **Programming the Magnetometer** | 2013-10-24 A |  |  | 0% → 90% | 9d → 0d |  |  |
| 15 | Research/Read Data Sheets | 2013-10-24 A | 2013-11-04 A |  | 0% → 100% | 9d → none |  |  |
| 16 | Develop TWI Library | 2013-11-05 A | 2013-11-14 A |  | 0% → 100% | 9d → none |  |  |
| 17 | Develop LSM303 Library | 2013-11-15 A |  |  | 0% → 75% | 9d → 0d |  |  |
| 18 | **Prototyping** |  | 2013-11-29 → 2013-12-05 (+6d) | 9d → 13d |  |  |  |  |
| 21 | Test Prototype | 2013-11-25 → 2013-11-29 (+4d) | 2013-11-29 → 2013-12-05 (+6d) |  |  |  | 20 → 20, 9, 14 |  |
| 22 | **Build and Test** | 2013-12-02 → 2013-12-06 (+4d) | 2013-12-11 → 2013-12-24 (+13d) | 8d → 13d |  |  |  |  |
| 23 | Construct Boards | 2013-12-02 → 2013-12-06 (+4d) | 2013-12-04 → 2013-12-10 (+6d) |  |  |  |  |  |
| 24 | Test Boards | 2013-12-05 → 2013-12-11 (+6d) | 2013-12-11 → 2013-12-17 (+6d) |  |  |  |  |  |
| 25 | Documentation/Presentation | 2013-12-02 → 2013-12-18 (+16d) | 2013-12-06 → 2013-12-24 (+18d) |  |  | 3d → 0d | 21 → 24 |  |
